# 福莱特自研MES项目

Schedule from a web Gantt chart, 2026-08-17 to 2027-05-10.
Saturdays and Sundays are off

## Schedule

| ID | WBS | Task | Duration | Start | Finish | Predecessors | Complete | Status |
| --- | --- | --- | --- | --- | --- | --- | --- | --- |
| 2 | 1 | 项目启动会 | 1d | 2026-11-20 | 2026-11-20 |  | 100% | done |
| 3 | 2 | **培训** | 10d | 2026-09-14 | 2026-09-25 |  |  | waiting |
| 4 | 2.1 | 培训材料编写 | 5d | 2026-09-14 | 2026-09-18 |  |  | waiting |
| 5 | 2.2 | 系统动员会 | 1d | 2026-09-18 | 2026-09-18 |  |  | waiting |
| 6 | 2.3 | 系统培训 | 5d | 2026-09-21 | 2026-09-25 |  |  | waiting |
| 7 | 3 | **系统试运行** | 20d | 2026-08-17 | 2026-09-11 |  |  | waiting |
| 8 | 3.1 | 现场设备硬件确认 | 5d | 2026-08-24 | 2026-08-28 |  |  | waiting |
| 9 | 3.2 | 试运行环境搭建 | 5d | 2026-08-17 | 2026-08-21 |  |  | waiting |
| 10 | 3.3 | 试运行数据准备 | 10d | 2026-08-17 | 2026-08-28 |  |  | waiting |
| 11 | 3.4 | 系统试运行 | 10d | 2026-08-31 | 2026-09-11 |  |  | waiting |
| 12 | 3.5 | 功能优化 | 10d | 2026-08-31 | 2026-09-11 |  |  | waiting |
| 13 | 4 | **系统上线** | 40d | 2026-08-31 | 2026-10-23 |  |  | waiting |
| 14 | 4.1 | 正式环境部署 | 5d | 2026-08-31 | 2026-09-04 |  |  | waiting |
| 15 | 4.2 | 正式环境数据准备 | 5d | 2026-09-07 | 2026-09-11 | 14 |  | waiting |
| 16 | 4.3 | 正式上线 | 15d | 2026-09-14 | 2026-10-02 | 11 |  | waiting |
| 17 | 4.4 | 验收签字 | 15d | 2026-10-05 | 2026-10-23 | 16 |  | waiting |
| 18 | 5 | **南通** | 85d | 2026-09-21 | 2027-01-15 |  |  | waiting |
| 19 | 5.1 | 南通设备准备 | 35d | 2026-09-21 | 2026-11-06 |  |  | waiting |
| 20 | 5.2 | **系统试运行** | 30d | 2026-11-09 | 2026-12-18 |  |  | waiting |
| 21 | 5.2.1 | 现场设备硬件确认 | 5d | 2026-11-09 | 2026-11-13 |  |  | waiting |
| 22 | 5.2.2 | 试运行环境搭建 | 5d | 2026-11-09 | 2026-11-13 |  |  | waiting |
| 23 | 5.2.3 | 试运行数据准备 | 10d | 2026-11-09 | 2026-11-20 |  |  | waiting |
| 24 | 5.2.4 | 系统动员会 | 1d | 2026-11-20 | 2026-11-20 |  |  | waiting |
| 25 | 5.2.5 | 系统培训 | 5d | 2026-11-23 | 2026-11-27 | 23 |  | waiting |
| 26 | 5.2.6 | 系统试运行 | 15d | 2026-11-30 | 2026-12-18 | 25 |  | waiting |
| 27 | 5.2.7 | 系统针对性优化 | 15d | 2026-11-30 | 2026-12-18 |  |  | waiting |

| ID | WBS | Task | Duration | Start | Finish | Predecessors | Status |
| --- | --- | --- | --- | --- | --- | --- | --- |
| 28 | 5.3 | **正式上线** | 30d | 2026-12-07 | 2027-01-15 |  | waiting |
| 29 | 5.3.1 | 正式环境部署 | 5d | 2026-12-07 | 2026-12-11 |  | waiting |
| 30 | 5.3.2 | 正式环境数据准备 | 5d | 2026-12-14 | 2026-12-18 | 29 | waiting |
| 31 | 5.3.3 | 系统正式上线 | 20d | 2026-12-21 | 2027-01-15 | 26, 30 | waiting |
| 32 | 6 | **安福三期** | 75d | 2026-11-23 | 2027-03-05 |  | waiting |
| 33 | 6.1 | 三期设备准备 | 30d | 2026-11-23 | 2027-01-01 |  | waiting |
| 34 | 6.2 | **系统试运行** | 30d | 2027-01-04 | 2027-02-12 |  | waiting |
| 35 | 6.2.1 | 现场设备硬件确认 | 5d | 2027-01-04 | 2027-01-08 |  | waiting |
| 36 | 6.2.2 | 试运行环境搭建 | 5d | 2027-01-04 | 2027-01-08 |  | waiting |
| 37 | 6.2.3 | 试运行数据准备 | 5d | 2027-01-11 | 2027-01-15 | 36 | waiting |
| 38 | 6.2.4 | 系统动员会 | 1d | 2027-01-08 | 2027-01-08 |  | waiting |
| 39 | 6.2.5 | 系统培训 | 5d | 2027-01-11 | 2027-01-15 |  | waiting |
| 40 | 6.2.6 | 系统试运行 | 20d | 2027-01-18 | 2027-02-12 | 37, 39 | waiting |
| 41 | 6.2.7 | 系统针对性优化 | 20d | 2027-01-18 | 2027-02-12 |  | waiting |
| 42 | 6.3 | **系统正式上线** | 30d | 2027-01-25 | 2027-03-05 |  | waiting |
| 43 | 6.3.1 | 正式环境部署 | 5d | 2027-01-25 | 2027-01-29 |  | waiting |
| 44 | 6.3.2 | 正式环境数据准备 | 5d | 2027-02-01 | 2027-02-05 | 43 | waiting |
| 45 | 6.3.3 | 系统正式上线 | 15d | 2027-02-15 | 2027-03-05 | 40 | waiting |
| 46 | 7 | **越南** | 90d | 2026-12-28 | 2027-04-30 |  | waiting |
| 47 | 7.1 | 越南设备准备 | 30d | 2027-01-11 | 2027-02-19 |  | waiting |
| 48 | 7.2 | 越南版本准备 | 40d | 2026-12-28 | 2027-02-19 |  | waiting |
| 49 | 7.3 | **试运行** | 35d | 2027-02-22 | 2027-04-09 |  | waiting |
| 50 | 7.3.1 | 现场设备硬件确认 | 5d | 2027-02-22 | 2027-02-26 |  | waiting |
| 51 | 7.3.2 | 试运行环境搭建 | 5d | 2027-02-22 | 2027-02-26 |  | waiting |
| 52 | 7.3.3 | 试运行数据准备 | 5d | 2027-03-01 | 2027-03-05 | 51 | waiting |
| 53 | 7.3.4 | 系统动员会 | 1d | 2027-03-05 | 2027-03-05 |  | waiting |
| 54 | 7.3.5 | 系统培训 | 5d | 2027-03-08 | 2027-03-12 | 52, 53 | waiting |
| 55 | 7.3.6 | 系统试运行 | 20d | 2027-03-15 | 2027-04-09 | 54 | waiting |
| 56 | 7.3.7 | 系统针对性优化 | 20d | 2027-03-15 | 2027-04-09 |  | waiting |

| ID | WBS | Task | Duration | Start | Finish | Status |
| --- | --- | --- | --- | --- | --- | --- |
| 57 | 7.4 | **系统上线** | 25d | 2027-03-29 | 2027-04-30 | waiting |
| 58 | 7.4.1 | 正式环境部署 | 5d | 2027-03-29 | 2027-04-02 | waiting |
| 59 | 7.4.2 | 正式环境数据准备 | 10d | 2027-03-29 | 2027-04-09 | waiting |
| 60 | 7.4.3 | 系统上线 | 15d | 2027-04-12 | 2027-04-30 | waiting |
| 61 | 8 | 安福二期 | 1d | 2027-05-10 | 2027-05-10 | waiting |
